# Group-29

Schedule from MS Project, 2024-01-01 to 2024-07-10, status date 2024-03-15, costs in ₹, A marks actual dates.

## Calendars

- Standard: Mon-Fri 08:00-12:00, 13:00-17:00; Sat-Sun off.

## Resources

| Resource | Group | Rate | Cost per use |
| --- | --- | --- | --- |
| Project Mnager | Group-1 | 1000 | 100 |
| IT Team | Group-2 | 860 | 100 |
| Business analyst | Group-2 | 1150 | 100 |
| Subject Matter Expert | Group-2 | 1500 | 100 |
| Traing Specialist | Group-3 | 890 | 40 |
| Testing Team | Group-3 | 800 | 50 |

## Schedule

| ID | WBS | Task | Duration | Start | Finish | Predecessors | Complete | Remaining | Baseline start | Baseline finish | Baseline duration | Total slack | Free slack | Resources | Work | Actual work | Cost | Baseline cost | Actual cost |
| --- | --- | --- | --- | --- | --- | --- | --- | --- | --- | --- | --- | --- | --- | --- | --- | --- | --- | --- | --- |
| 1 | 1 | **Block Chain Integration Project** | 136.88d | 2024-01-01 A | 2024-07-09 |  | 42% | 78.86d | 2024-01-01 | 2024-07-09 | 136.88d |  |  |  | 1721h | 472h | 1,812,760 | 1,813,960 | 526,531.4 |
| 2 | 1.1 | **Project Initiation** | 2d | 2024-01-01 A | 2024-01-03 A |  | 100% |  | 2024-01-01 | 2024-01-03 | 2d |  |  |  | 56h | 56h | 56,400 | 56,400 | 56,400 |
| 3 | 1.1.1 | Define Project Scope | 1d | 2024-01-01 A | 2024-01-02 A |  | 100% |  | 2024-01-01 | 2024-01-02 | 1d |  |  | Project Mnager | 8h | 8h | 8,100 | 8,100 | 8,100 |
| 4 | 1.1.2 | Establish Project Team | 2d | 2024-01-01 A | 2024-01-03 A |  | 100% |  | 2024-01-01 | 2024-01-03 | 2d |  |  | Project Mnager | 16h | 16h | 16,100 | 16,100 | 16,100 |
| 5 | 1.1.3 | Develop Project Charter | 2d | 2024-01-01 A | 2024-01-03 A |  | 100% |  | 2024-01-01 | 2024-01-03 | 2d |  |  | Project Mnager | 16h | 16h | 16,100 | 16,100 | 16,100 |
| 6 | 1.1.4 | Secure Funding and Resourses | 2d | 2024-01-01 A | 2024-01-03 A |  | 100% |  | 2024-01-01 | 2024-01-03 | 2d |  |  | Project Mnager | 16h | 16h | 16,100 | 16,100 | 16,100 |
| 7 | 1.2 | **Block Chain Technology Assesment** | 9d | 2024-01-03 A | 2024-01-16 A |  | 100% |  | 2024-01-03 | 2024-01-16 | 9d |  |  |  | 96h | 96h | 144,300 | 144,300 | 144,300 |
| 8 | 1.2.1 | Identifying Blockchain UseCases for Supply Chain | 3d | 2024-01-03 A | 2024-01-08 A | 2 | 100% |  | 2024-01-03 | 2024-01-08 | 3d |  |  | Subject Matter Expert | 24h | 24h | 36,100 | 36,100 | 36,100 |
| 9 | 1.2.2 | Research Existing BlocK Chain Solution | 5d | 2024-01-03 A | 2024-01-10 A | 2 | 100% |  | 2024-01-03 | 2024-01-10 | 5d |  |  | Subject Matter Expert | 40h | 40h | 60,100 | 60,100 | 60,100 |
| 10 | 1.2.3 | Analyze Benefits & Risk | 4d | 2024-01-10 A | 2024-01-16 A | 9, 8 | 100% |  | 2024-01-10 | 2024-01-16 | 4d |  |  | Subject Matter Expert | 32h | 32h | 48,100 | 48,100 | 48,100 |
| 11 | 1.3 | **Vendor Selection for Block Chain Solution** | 21d | 2024-01-16 A | 2024-02-14 |  | 89% | 2.21d | 2024-01-16 | 2024-02-14 | 21d | 105.29d |  |  | 152h | 136h | 175,300 | 193,700 | 156,900 |
| 12 | 1.3.1 | Develop Vendor Selection Criteria | 2d | 2024-01-16 A | 2024-01-18 A | 10 | 100% |  | 2024-01-16 | 2024-01-18 | 2d |  |  | Business analyst | 16h | 16h | 18,500 | 18,500 | 18,500 |
| 13 | 1.3.2 | Identify Potential Vendors | 3d | 2024-01-18 A | 2024-01-23 A | 12 | 100% |  | 2024-01-18 | 2024-01-23 | 3d |  |  | Business analyst | 24h | 24h | 27,700 | 27,700 | 27,700 |
| 14 | 1.3.3 | Request For Proposal (RPF) Development | 2d | 2024-01-23 A | 2024-01-25 | 13 |  | 2d | 2024-01-23 | 2024-01-29 | 4d | 119.29d |  | Business analyst | 16h |  | 18,500 | 36,900 | 100 |
| 15 | 1.3.4 | Vendor Evaluation and Selection | 7d | 2024-01-29 A | 2024-02-07 A | 14 | 100% |  | 2024-01-29 | 2024-02-07 | 7d |  |  | Business analyst | 56h | 56h | 64,500 | 64,500 | 64,500 |
| 16 | 1.3.5 | Contract Negotiation | 5d | 2024-02-07 A | 2024-02-14 A | 15 | 100% |  | 2024-02-07 | 2024-02-14 | 5d |  |  | Business analyst | 40h | 40h | 46,100 | 46,100 | 46,100 |
| 17 | 1.4 | **Integration Planning with Existing Systems** | 71.29d | 2024-02-14 A | 2024-05-23 |  | 40% | 42.8d | 2024-02-14 | 2024-05-22 | 70.88d | 0d |  |  | 804h | 166h | 818,660 | 801,460 | 152,871.4 |
| 18 | 1.4.1 | Data Maping & Integration Strategy | 5d | 2024-02-14 A | 2024-02-21 A | 16 | 100% |  | 2024-02-14 | 2024-02-21 | 5d |  |  | IT Team | 40h | 40h | 34,500 | 34,500 | 34,500 |
| 19 | 1.4.2 | System Interface Design | 9.5d | 2024-02-21 A | 2024-03-05 A | 18 | 100% |  | 2024-02-21 | 2024-03-01 | 7d |  |  | IT Team | 76h | 76h | 65,460 | 48,260 | 65,460 |
| 20 | 1.4.3 | Development & Testing of Integration | 22d | 2024-03-01 A | 2024-05-16 | 19 | 9% | 19.92d | 2024-03-01 | 2024-05-15 | 22d | 0d |  | Subject Matter Expert; IT Team; Testing Team | 528h | 50h | 556,410 | 556,410 | 52,911.4 |
| 21 | 1.4.4 | User Acceptance Testing(UAT) Planning | 5d | 2024-05-16 | 2024-05-23 | 20 |  |  | 2024-05-16 | 2024-05-22 | 5d | 0d |  | Subject Matter Expert; IT Team; Testing Team; Traing Specialist | 160h |  | 162,290 | 162,290 |  |
| 22 | 1.5 | **Employee Training onBlockChain Implimentation** | 12d | 2024-02-14 A | 2024-03-01 |  | 19% | 9.75d | 2024-02-14 | 2024-03-01 | 12d | 59.29d |  |  | 96h | 18h | 85,520 | 85,520 | 16,060 |
| 23 | 1.5.1 | Development of Training Materials | 5d | 2024-02-14 A | 2024-02-21 | 16 | 45% | 2.75d | 2024-02-14 | 2024-02-21 | 5d | 59.29d | 0d | Traing Specialist | 40h | 18h | 35,640 | 35,640 | 16,060 |
| 24 | 1.5.2 | Train Internal Teams | 7d | 2024-02-21 | 2024-03-01 | 23 |  |  | 2024-02-21 | 2024-03-01 | 7d | 58.88d |  | Traing Specialist | 56h |  | 49,880 | 49,880 |  |

| ID | WBS | Task | Duration | Start | Finish | Predecessors | Baseline start | Baseline finish | Baseline duration | Total slack | Resources | Work | Cost | Baseline cost |
| --- | --- | --- | --- | --- | --- | --- | --- | --- | --- | --- | --- | --- | --- | --- |
| 25 | 1.6 | **Testing and Quality Assurance** | 21d | 2024-05-16 | 2024-06-14 |  | 2024-05-16 | 2024-06-13 | 21d | 0d |  | 184h | 147,350 | 147,350 |
| 26 | 1.6.1 | System Integration Testing | 7d | 2024-05-16 | 2024-05-27 | 20 | 2024-05-16 | 2024-05-24 | 7d | 8d | Testing Team | 56h | 44,850 | 44,850 |
| 27 | 1.6.2 | User Acceptance Testing Execution | 10d | 2024-05-23 | 2024-06-06 | 21, 24 | 2024-05-23 | 2024-06-05 | 10d | 0d | Testing Team | 80h | 64,050 | 64,050 |
| 28 | 1.6.3 | Defect Resolution | 6d | 2024-06-06 | 2024-06-14 | 26, 27 | 2024-06-06 | 2024-06-13 | 6d | 0d | Testing Team | 48h | 38,450 | 38,450 |
| 29 | 1.7 | **Deployment and Go-Live** | 11d | 2024-06-14 | 2024-07-01 |  | 2024-06-14 | 2024-06-28 | 11d | 0d |  | 189h | 207,930 | 207,930 |
| 30 | 1.7.1 | System Deployment and Configuration | 3d | 2024-06-14 | 2024-06-19 | 28 | 2024-06-14 | 2024-06-18 | 3d | 0d | Subject Matter Expert; IT Team; Project Mnager | 72h | 80,940 | 80,940 |
| 31 | 1.7.2 | User Support & Post-Deployment Monitoring | 4.88d | 2024-06-19 | 2024-07-01 | 30 | 2024-06-19 | 2024-06-28 | 4.88d | 0d | Subject Matter Expert; IT Team; Traing Specialist | 117h | 126,990 | 126,990 |
| 32 | 1.8 | **Project Closure** | 7d | 2024-07-01 | 2024-07-10 |  | 2024-07-01 | 2024-07-09 | 7d | 0d |  | 144h | 177,300 | 177,300 |
| 33 | 1.8.1 | Project Documentation and Lesson Learned | 3d | 2024-07-01 | 2024-07-04 | 31 | 2024-07-01 | 2024-07-03 | 3d | 0d | Project Mnager; Subject Matter Expert | 48h | 60,200 | 60,200 |
| 34 | 1.8.2 | Project Handover and Final Review | 4d | 2024-07-04 | 2024-07-10 | 33 | 2024-07-04 | 2024-07-09 | 4d | 0d | Business analyst; Project Mnager; Subject Matter Expert | 96h | 117,100 | 117,100 |
